# GPS-XAR

Schedule from MS Project, 2007-04-02 to 2007-11-06, A marks actual dates.
Project Schedule
NCICB

## Calendars

- Standard: Mon-Fri 08:00-12:00, 13:00-17:00; Sat-Sun off.

## Resources

| Resource |
| --- |
| smatyas |
| bgendleman |
| smiller |
| kkanchinadam |

## Schedule

| ID | WBS | Task | Duration | Start | Finish | Predecessors | Complete | Remaining | Baseline start | Baseline finish | Baseline duration | Total slack | Constraint | Deadline | Resources | Work | Actual work |
| --- | --- | --- | --- | --- | --- | --- | --- | --- | --- | --- | --- | --- | --- | --- | --- | --- | --- |
| 1 | 1 | **protExpress 1.0** | 157d? | 2007-04-02 A | 2007-11-06 |  | 44% | 87.78d? | 2007-04-02 | 2007-05-21 | 35.75d? | 0d |  |  |  | 294.2h | 223.2h |
| 2 | 1.1 | **Inception Phase** | 41d? | 2007-04-02 A | 2007-05-28 |  | 97% | 1.13d? | 2007-04-02 | 2007-05-15 | 32d | 0d |  |  |  | 221.4h | 203.2h |
| 3 | 1.1.1 | **Inception Iteration 1** | 41d? | 2007-04-02 A | 2007-05-28 |  | 97% | 1.13d? | 2007-04-02 | 2007-05-15 | 32d | 0d |  |  |  | 221.4h | 203.2h |
| 4 | 1 | **Project Management** | 31d? | 2007-04-06 A | 2007-05-18 A |  | 100% |  | 2007-04-02 | 2007-05-15 | 31.25d |  |  |  |  | 16h | 16h |
| 5 | 1.1.1.1.1 | Plan the project | 1d? | 2007-04-06 A | 2007-04-06 A |  | 100% |  | 2007-04-02 | 2007-04-19 | 12d |  | start no earlier than 2007-04-02 |  | bgendleman [20%]; kkanchinadam | 16h | 16h |
| 6 | 1.4 | Plan Remainder of Initial Iteration | 1d? | 2007-04-19 A | 2007-04-19 A |  | 100% |  | 2007-04-19 | 2007-04-19 | 1d |  | start no earlier than 2007-04-19 |  |  |  |  |
| 7 | 1.8 | Plan for Next Iteration | 1d | 2007-05-18 A | 2007-05-18 A |  | 100% |  | 2007-05-07 | 2007-05-11 | 5d |  |  |  |  |  |  |
| 8 | 1.1.1.1.4 | **Finalize Deliverables** | 3d? | 2007-05-11 A | 2007-05-15 A |  | 100% |  | 2007-04-02 | 2007-05-15 | 31.25d |  |  |  |  |  |  |
| 9 | 1.1.1.1.4.1 | April Status Report | 1d? | 2007-05-15 A | 2007-05-15 A |  | 100% |  | 2007-05-15 | 2007-05-15 | 2h |  | start no earlier than 2007-05-15 | 2007-05-15 |  |  |  |
| 10 | 1.1.1.1.4.2 | May Status Report | 1d? | 2007-05-11 A | 2007-05-11 A |  | 100% |  |  |  |  |  | start no earlier than 2007-05-11 |  |  |  |  |
| 11 | 1.1.1.1.4.3 | Release Risk List | 1d? | 2007-05-11 A | 2007-05-11 A |  | 100% |  | 2007-04-02 | 2007-04-02 | 2h |  | start no earlier than 2007-05-11 | 2007-05-15 |  |  |  |
| 12 | 3 | **Requirements** | 39.9d? | 2007-04-02 A | 2007-05-25 A |  | 100% |  | 2007-04-02 | 2007-05-14 | 30.35d |  |  |  |  | 105.6h | 105.6h |
| 13 | 3.2 | Elicit Stakeholder Needs | 5.38d | 2007-04-06 A | 2007-04-13 A | 5SS | 100% |  | 2007-04-04 | 2007-05-04 | 22.75d |  |  |  |  |  |  |
| 14 | 3.3 | Identify and Describe Use Cases | 7d | 2007-04-18 A | 2007-05-04 A |  | 100% |  | 2007-04-18 | 2007-04-23 | 4d |  | finish no earlier than 2007-04-20 |  | bgendleman | 56h | 56h |
| 15 | 3.5 | Refine the System Definition | 2.5d | 2007-05-04 A | 2007-05-17 A | 6, 14 | 100% |  | 2007-04-24 | 2007-05-10 | 6.25d |  | start no earlier than 2007-04-18 |  | bgendleman | 20h | 20h |
| 16 | 1.1.1.2.4 | **Implement Requirement and Test Traceability** | 4.5d | 2007-04-16 A | 2007-04-20 A |  | 100% |  | 2007-04-16 | 2007-04-20 | 4.6d |  |  |  |  | 3.6h | 3.6h |
| 17 | 1.1.1.2.4.1 | Determine Approach | 2.25d | 2007-04-16 A | 2007-04-20 A |  | 100% |  | 2007-04-16 | 2007-04-20 | 2.25d |  | start no earlier than 2007-04-16 |  | bgendleman [20%] | 3.6h | 3.6h |
| 18 | 1.1.1.2.5 | **Finalize Deliverables** | 39.9d? | 2007-04-02 A | 2007-05-25 A |  | 100% |  | 2007-04-02 | 2007-05-14 | 30.35d |  |  |  |  | 26h | 26h |
| 19 | 1.1.1.2.5.1 | Finalize ARC Document | 1d? | 2007-04-27 A | 2007-04-27 A |  | 100% |  |  |  |  |  | start no earlier than 2007-04-27 |  |  |  |  |
| 20 | 1.1.1.2.5.2 | Requirements Management Plan | 0.25d | 2007-05-11 A | 2007-05-11 A |  | 100% |  | 2007-04-02 | 2007-04-09 | 0.25d |  |  |  | bgendleman | 2h | 2h |
| 21 | 1.1.1.2.5.3 | Finalize Vision Document | 1d | 2007-05-14 A | 2007-05-24 A |  | 100% |  | 2007-04-30 | 2007-05-11 | 1d |  |  |  | bgendleman | 8h | 8h |
| 22 | 1.1.1.2.5.4 | Finalize Supplementary Spec | 1d | 2007-05-11 A | 2007-05-25 A | 21 | 100% |  | 2007-05-11 | 2007-05-14 | 1d |  |  |  | bgendleman | 8h | 8h |
| 23 | 1.1.1.2.5.5 | Produce Use Case Summary | 0.5d | 2007-04-02 A | 2007-04-02 A |  | 100% |  |  |  |  |  |  |  |  |  |  |
| 24 | 1.1.1.2.5.6 | Finalize Use Case Model | 1d | 2007-04-27 A | 2007-05-11 A | 14 | 100% |  | 2007-04-27 | 2007-05-04 | 1d |  |  | 2007-05-04 | bgendleman | 8h | 8h |

| ID | WBS | Task | Type | Duration | Start | Finish | Predecessors | Complete | Remaining | Baseline start | Baseline finish | Baseline duration | Total slack | Constraint | Deadline | Resources | Work | Actual work |
| --- | --- | --- | --- | --- | --- | --- | --- | --- | --- | --- | --- | --- | --- | --- | --- | --- | --- | --- |
| 25 | 4 | **Analysis and Design** |  | 16d | 2007-05-07 A | 2007-05-28 A |  | 100% |  | 2007-04-02 | 2007-04-20 | 15d |  |  |  |  |  |  |
| 26 | 1.1.1.3.1 | Analyze PRIDE XML |  | 9d | 2007-05-09 A | 2007-05-21 A |  | 100% |  |  |  |  |  |  |  |  |  |  |
| 27 | 1.1.1.3.2 | Analyze CPAS 2.0 Data Model |  | 5d | 2007-05-07 A | 2007-05-11 A |  | 100% |  |  |  |  |  |  |  |  |  |  |
| 28 | 1.1.1.3.3 | Compare PRIDE and XAR |  | 5d | 2007-05-22 A | 2007-05-28 A | 26 | 100% |  |  |  |  |  |  |  |  |  |  |
| 29 | 1.1.1.3.4 | **Finalize Deliverables** |  | 3d | 2007-05-24 A | 2007-05-28 A |  | 100% |  | 2007-04-11 | 2007-04-19 | 6d |  |  |  |  |  |  |
| 30 | 1.1.1.3.4.1 | Release Candidate Software Architecture Document |  | 3d | 2007-05-24 A | 2007-05-28 A |  | 100% |  | 2007-04-11 | 2007-04-19 | 5d |  |  |  |  |  |  |
| 31 | 1.1.1.4 | **Implementation** |  | 2d | 2007-04-02 A | 2007-04-03 A |  | 100% |  | 2007-04-02 | 2007-05-15 | 32d |  |  |  |  |  |  |
| 32 | 1.1.1.4.1 | Install CPAS Locally/Reverse Engineer Data Model |  | 2d | 2007-04-02 A | 2007-04-03 A |  | 100% |  |  |  |  |  |  |  |  |  |  |
| 33 | 1.1.1.4.2 | Structure the Implementation Model |  | 2d | 2007-04-02 A | 2007-04-03 A |  | 100% |  | 2007-04-02 | 2007-04-04 | 1.5d |  | start no earlier than 2007-04-09 | 2007-04-06 |  |  |  |
| 34 | 5 | **Test** |  | 23.52d | 2007-04-02 A | 2007-05-03 |  | 33% | 15.75d | 2007-04-02 | 2007-05-15 | 31.07d | 17.48d |  |  |  | 27.8h | 9.6h |
| 35 | 1.1.1.5.1 | Meet with Indepdent QA |  | 2h | 2007-04-02 A | 2007-04-02 A |  | 100% |  | 2007-04-09 | 2007-04-09 | 2h |  | finish no later than 2007-04-27 | 2007-04-27 | bgendleman [80%] | 1.6h | 1.6h |
| 36 | 5.1 | Analyze and Identify Test Approach |  | 1d | 2007-04-02 A | 2007-04-27 A |  | 100% |  | 2007-04-02 | 2007-04-27 | 1d |  |  |  | smatyas; bgendleman | 8h | 8h |
| 37 | 1.1.1.5.3 | **Finalize Deliverables** |  | 4.02d | 2007-04-27 | 2007-05-03 |  |  |  | 2007-04-27 | 2007-05-04 | 5d | 17.48d |  |  |  | 18.2h |  |
| 38 | 1.1.1.5.3.1 | Release Test Plan |  | 2.53d | 2007-04-27 | 2007-05-03 | 36 |  |  | 2007-04-27 | 2007-05-04 | 2.5d | 17.48d |  |  | smatyas; bgendleman [25%] | 18.2h |  |
| 39 | 6 | **Environment** |  | 36d | 2007-04-09 A | 2007-05-28 A |  | 100% |  | 2007-04-02 | 2007-05-14 | 30.25d |  |  |  |  | 42h | 42h |
| 40 | 1.1.1.6.1 | Establish Development Environment |  | 20d | 2007-05-01 A | 2007-05-28 A |  | 100% |  |  |  |  |  | finish no earlier than 2007-05-25 |  |  |  |  |
| 41 | 1.1.1.6.2 | Launch Development Process |  | 3h | 2007-04-09 A | 2007-04-09 A |  | 100% |  | 2007-04-09 | 2007-04-18 | 6h |  | start no earlier than 2007-04-09 |  | smatyas; smiller | 6h | 6h |
| 42 | 1.1.1.6.3 | **Finalize Deliverables** |  | 25d | 2007-04-16 A | 2007-05-18 A |  | 100% |  | 2007-04-19 | 2007-05-14 | 17.25d |  |  |  |  | 36h | 36h |
| 43 | 1.1.1.6.3.1 | Release Development Case |  | 0.25d | 2007-05-14 A | 2007-05-14 A |  | 100% |  | 2007-05-14 | 2007-05-14 | 0.25d |  | start no earlier than 2007-05-14 |  |  |  |  |
| 44 | 1.1.1.6.3.2 | Release Guidelines for the Project |  | 1.25d | 2007-04-16 A | 2007-04-17 A |  | 100% |  | 2007-04-20 | 2007-04-23 | 1.25d |  | start no earlier than 2007-04-16 |  |  |  |  |
| 45 | 1.1.1.6.3.3 | Release Templates for the Project |  | 9d | 2007-04-17 A | 2007-05-18 A |  | 100% |  | 2007-04-19 | 2007-04-30 | 5.55d |  | finish no earlier than 2007-04-13 |  | smiller [50%] | 36h | 36h |
| 46 | 7 | **Configuration & Change Management** |  | 32.11d | 2007-04-02 A | 2007-05-16 A |  | 100% |  | 2007-04-02 | 2007-05-15 | 31.25d |  |  |  |  | 30h | 30h |
| 47 | 7.1 | Plan Project Configuration and Change Control |  | 1d | 2007-04-20 A | 2007-04-23 A |  | 100% |  | 2007-04-20 | 2007-04-24 | 0.55d |  | finish no earlier than 2007-04-20 | 2007-05-15 | bgendleman | 8h | 8h |
| 48 | 1.1.1.7.2 | **Finalize Deliverables** |  | 32.11d | 2007-04-02 A | 2007-05-16 A |  | 100% |  | 2007-04-02 | 2007-05-15 | 31.25d |  |  |  |  | 22h | 22h |
| 49 | 1.1.1.7.2.1 | Release Configuration Management Plan |  | 0.75d | 2007-04-02 A | 2007-05-16 A |  | 100% |  | 2007-04-02 | 2007-05-15 | 0.75d |  |  |  | bgendleman | 6h | 6h |
| 50 | 1.1.1.7.2.2 | G-Forge Implementation of the Change Control Process |  | 2d | 2007-04-02 A | 2007-05-16 A |  | 100% |  | 2007-04-02 | 2007-05-14 | 2d |  |  |  | bgendleman | 16h | 16h |
| 51 | 1.1.1.8 | Inception Complete | milestone | 0d | 2007-05-28 A | 2007-05-28 A | 4, 5, 18, 8, 37, 42, 48 | 100% |  | 2007-05-15 | 2007-05-15 | 0d |  | start no earlier than 2007-05-28 | 2007-05-15 |  |  |  |

Notes:
- 27: - installed cpas local / - reverse engineered the data model
- 44: UML, Java, JSP/HTML
- 45: Java, JSP/HTML / Use Case Summary / Use Case Specification / Vision / Traceability Matrix - will attempt to do in EA

| ID | WBS | Task | Duration | Start | Finish | Predecessors | Complete | Remaining | Baseline start | Baseline finish | Baseline duration | Total slack | Free slack | Constraint | Resources | Work | Actual work |
| --- | --- | --- | --- | --- | --- | --- | --- | --- | --- | --- | --- | --- | --- | --- | --- | --- | --- |
| 52 | 1.2 | **Elaboration Phase** | 49d? | 2007-05-29 A | 2007-08-03 | 3 | 35% | 31.74d? | 2007-05-15 | 2007-05-17 | 2.5d? | 67d |  |  |  | 72.8h | 20h |
| 53 | 1.2.1 | **Elaboration - Iteration 1** | 32d | 2007-05-29 A | 2007-07-11 |  | 59% | 13.26d | 2007-05-15 | 2007-05-17 | 2.5d | 84d |  |  |  | 20h | 20h |
| 54 | 1.2.1.1 | **Project Management** | 8d | 2007-05-29 A | 2007-06-07 | 51 | 81% | 1.52d |  |  |  | 108d |  |  |  | 20h | 20h |
| 55 | 1.2.1.1.1 | Iteration Post Mortem - Inception | 20h | 2007-05-29 A | 2007-05-31 A |  | 100% |  | 2007-05-15 | 2007-05-17 | 20h |  |  | start no earlier than 2007-05-23 | smatyas | 20h | 20h |
| 56 | 1.2.1.1.2 | Plan Iteration | 1d | 2007-05-29 A | 2007-05-29 A |  | 100% |  |  |  |  |  |  |  |  |  |  |
| 57 | 1.2.1.1.3 | Trip to Indianapolis - CPAS | 4d | 2007-06-04 A | 2007-06-07 A |  | 100% |  |  |  |  |  |  | start no earlier than 2007-06-04 |  |  |  |
| 58 | 1.2.1.1.4 | Plan for Next Iteration | 1d | 2007-05-29 A | 2007-05-29 |  | 50% | 0.5d |  |  |  | 115d |  |  |  |  |  |
| 59 | 1.2.1.1.5 | **Finalize Deliverables** | 1d | 2007-05-29 A | 2007-05-29 |  | 25% | 0.75d |  |  |  | 115d |  |  |  |  |  |
| 60 | 1.2.1.1.5.1 | Update Project Plan | 1d | 2007-05-29 A | 2007-05-29 |  | 50% | 0.5d |  |  |  | 115d |  |  |  |  |  |
| 61 | 1.2.1.1.5.2 | Update Risk List | 1d | 2007-05-29 | 2007-05-29 |  |  |  |  |  |  | 115d |  |  |  |  |  |
| 62 | 1.2.1.2 | **Requirements** | 9d | 2007-05-29 A | 2007-06-08 |  | 73% | 2.45d |  |  |  | 107d |  |  |  |  |  |
| 63 | 1.2.1.2.1 | Incorporate Stakeholder Comments into Vision and Supplemental Specs | 2d | 2007-05-29 A | 2007-05-30 A |  | 100% |  |  |  |  |  |  |  |  |  |  |
| 64 | 1.2.1.2.2 | **Finalize Deliverables** | 9d | 2007-05-29 A | 2007-06-08 |  | 67% | 3d |  |  |  | 107d |  |  |  |  |  |
| 65 | 1.2.1.2.2.1 | Detail Registration and Login UC | 5d | 2007-05-29 A | 2007-06-04 |  | 50% | 2.5d |  |  |  | 111d |  | finish no earlier than 2007-06-04 |  |  |  |
| 66 | 1.2.1.2.2.2 | Detail Manage Protocol | 3d | 2007-06-05 A | 2007-06-07 A | 65 | 100% |  |  |  |  |  |  |  |  |  |  |
| 67 | 1.2.1.2.2.3 | Parse and Validate Proteomic Experiment File UC | 1d | 2007-06-08 A | 2007-06-08 | 66 | 50% | 0.5d |  |  |  | 107d |  |  |  |  |  |
| 68 | 1.2.1.3 | **Analysis and Design** | 21d | 2007-05-29 A | 2007-06-26 |  | 85% | 3.19d |  |  |  | 95d |  |  |  |  |  |
| 69 | 1.2.1.3.1 | Investigate EBI vs. EVS Ontology | 5d | 2007-05-29 A | 2007-06-04 A |  | 100% |  |  |  |  |  |  |  |  |  |  |
| 70 | 1.2.1.3.2 | Object Model for Experiment Annotation | 8d | 2007-06-08 A | 2007-06-19 A | 57 | 100% |  |  |  |  |  |  |  |  |  |  |
| 71 | 1.2.1.3.3 | Create Data Model | 5d | 2007-06-20 A | 2007-06-26 | 70 | 15% | 4.25d |  |  |  | 95d |  |  |  |  |  |
| 72 | 1.2.1.3.4 | Design of Conversion to XAR or PRIDE | 10d | 2007-06-08 A | 2007-06-21 A | 70 | 100% |  |  |  |  |  |  |  |  |  |  |
| 73 | 1.2.1.4 | **Implementation** | 18d | 2007-06-13 A | 2007-07-06 |  | 26% | 13.29d |  |  |  | 84d |  |  |  |  |  |
| 74 | 1.2.1.4.1 | Create Database | 3d | 2007-06-14 A | 2007-06-18 A |  | 100% |  |  |  |  |  |  |  |  |  |  |
| 75 | 1.2.1.4.2 | Representative XML Produced | 13d | 2007-06-13 A | 2007-06-29 |  | 19% | 10.5d |  |  |  | 0d |  | start no earlier than 2007-06-13 |  |  |  |
| 76 | 1.2.1.4.3 | UI for Protocol Annotation | 5d | 2007-07-02 | 2007-07-06 | 75 |  |  |  |  |  | 84d | 0d |  |  |  |  |

Notes:
- 69: Decision was to use both beginning with EVS
- 76: Deferred to E2

| ID | WBS | Task | Type | Duration | Start | Finish | Predecessors | Complete | Remaining | Total slack | Free slack | Constraint | Work |
| --- | --- | --- | --- | --- | --- | --- | --- | --- | --- | --- | --- | --- | --- |
| 77 | 1.2.1.5 | **Test** |  | 32d | 2007-05-29 A | 2007-07-11 |  | 20% | 25.6d | 84d |  |  |  |
| 78 | 1.2.1.5.1 | Request Test Environment |  | 1d | 2007-06-26 A | 2007-06-26 A |  | 100% |  |  |  | start no earlier than 2007-06-26 |  |
| 79 | 1.2.1.5.2 | Produce Test Plan |  | 1d | 2007-05-29 | 2007-05-29 |  |  |  | 115d |  |  |  |
| 80 | 1.2.1.5.3 | Junit Tests for Targeted UC |  | 3d | 2007-07-09 | 2007-07-11 | 76 |  |  | 84d |  |  |  |
| 81 | 1.2.1.6 | **Environment** |  | 7.75d | 2007-05-29 A | 2007-06-07 |  | 63% | 2.91d | 108.25d |  |  |  |
| 82 | 1.2.1.6.1 | Development Environment Available |  | 1w | 2007-05-29 A | 2007-06-04 A |  | 100% |  |  |  |  |  |
| 83 | 1.2.1.6.2 | **Set Up Tools** |  | 2.75d | 2007-06-05 A | 2007-06-07 | 82 | 25% | 2.06d | 108.25d |  |  |  |
| 84 | 1.2.1.6.2.1 | Set Up Maven |  | 1d | 2007-06-05 | 2007-06-05 |  |  |  | 110d |  |  |  |
| 85 | 1.2.1.6.2.2 | Set Up Continuous Integration |  | 1d | 2007-06-05 | 2007-06-05 | 82 |  |  | 110d |  |  |  |
| 86 | 1.2.1.6.2.3 | Set Up Eclipse |  | 1d | 2007-06-05 A | 2007-06-05 A | 85 | 100% |  |  |  |  |  |
| 87 | 1.2.1.6.2.4 | Set Up Selenium |  | 1d | 2007-06-06 | 2007-06-06 | 86 |  |  | 108.25d | 0d |  |  |
| 88 | 1.2.1.6.2.5 | Set Up Code Quality Tools |  | 1d | 2007-06-05 A | 2007-06-07 | 87 | 25% | 0.75d | 108.25d |  |  |  |
| 89 | 1.2.1.7 | Elabortion Iteration 1 Complete | milestone | 0d | 2007-06-29 | 2007-06-29 | 75 |  |  | 0d |  |  |  |
| 90 | 1.2.1.8 | Vacation |  | 5d | 2007-07-02 | 2007-07-06 | 89 |  |  | 0d |  |  |  |
| 91 | 1.2.2 | **Elaboration - Iteration 2** |  | 20d? | 2007-07-09 | 2007-08-03 | 90 |  |  | 0d |  |  | 52.8h |
| 92 | 1.2.2.1 | **Project Management** |  | 1d | 2007-07-09 | 2007-07-09 |  |  |  | 86d |  |  |  |
| 93 | 1.2.2.1.1 | Iteration Post Mortem - E1 |  | 1d | 2007-07-09 | 2007-07-09 |  |  |  | 86d |  |  |  |
| 94 | 1.2.2.1.2 | Plan Iteration |  | 1d | 2007-07-09 | 2007-07-09 |  |  |  | 86d |  |  |  |
| 95 | 1.2.2.1.3 | Plan for Next Iteration |  | 1d | 2007-07-09 | 2007-07-09 |  |  |  | 86d |  |  |  |
| 96 | 1.2.2.2 | **Requirements** |  | 2d | 2007-07-09 | 2007-07-10 |  |  |  | 85d |  |  |  |
| 97 | 1.2.2.2.1 | Incorporate Stakeholder Use Case Feedback |  | 2d | 2007-07-09 | 2007-07-10 |  |  |  | 85d |  |  |  |
| 98 | 1.2.2.2.2 | **Finalize Deliverables** |  | 2d | 2007-07-09 | 2007-07-10 |  |  |  | 85d |  |  |  |
| 99 | 1.2.2.2.2.1 | Detail Registration Use Case |  | 1d | 2007-07-09 | 2007-07-09 |  |  |  | 86d |  |  |  |
| 100 | 1.2.2.2.2.2 | Detail Manage Experiments |  | 2d | 2007-07-09 | 2007-07-10 |  |  |  | 85d |  |  |  |
| 101 | 1.2.2.2.2.3 | Validation Requirements of XAR and Pride |  | 2d | 2007-07-09 | 2007-07-10 |  |  |  | 85d |  |  |  |

Notes:
- 84: Determined that Maven is premature

| ID | WBS | Task | Type | Duration | Start | Finish | Predecessors | Baseline start | Baseline finish | Baseline duration | Total slack | Free slack | Resources | Work |
| --- | --- | --- | --- | --- | --- | --- | --- | --- | --- | --- | --- | --- | --- | --- |
| 102 | 1.2.2.3 | **Analysis and Design** |  | 7d | 2007-07-09 | 2007-07-17 |  |  |  |  | 0d |  |  |  |
| 103 | 1.2.2.3.1 | Update Software Architecture Document |  | 2d | 2007-07-09 | 2007-07-10 |  |  |  |  | 0d |  |  |  |
| 104 | 1.2.2.3.2 | Refine Design of XAR and Pride Conversion |  | 5d | 2007-07-11 | 2007-07-17 | 103 |  |  |  | 0d |  |  |  |
| 105 | 1.2.2.3.3 | Specify EVS Access |  | 3d | 2007-07-09 | 2007-07-11 |  |  |  |  | 72d | 0d |  |  |
| 106 | 1.2.2.3.4 | Specify EBI Access Method |  | 3d | 2007-07-12 | 2007-07-16 | 105 |  |  |  | 81d |  |  |  |
| 107 | 1.2.2.4 | **Implementation** |  | 20d | 2007-07-09 | 2007-08-03 |  |  |  |  | 67d |  |  |  |
| 108 | 1.2.2.4.1 | Produce Representative XML |  | 5d | 2007-07-09 | 2007-07-13 |  |  |  |  | 82d |  |  |  |
| 109 | 1.2.2.4.2 | Build Manage Protocol UI |  | 8d | 2007-07-09 | 2007-07-18 |  |  |  |  | 67d | 0d |  |  |
| 110 | 1.2.2.4.3 | Build Manage Experiments UI |  | 12d | 2007-07-19 | 2007-08-03 | 105, 109 |  |  |  | 67d | 0d |  |  |
| 111 | 1.2.2.5 | **Test** |  | 10d | 2007-07-09 | 2007-07-20 |  |  |  |  | 77d |  |  |  |
| 112 | 1.2.2.5.1 | Produce Test Plan |  | 1d | 2007-07-09 | 2007-07-09 |  |  |  |  | 86d |  |  |  |
| 113 | 1.2.2.5.2 | Junit Tests for Targeted UC |  | 2d | 2007-07-19 | 2007-07-20 | 109 |  |  |  | 77d |  |  |  |
| 114 | 1.2.2.6 | **Environment** |  | 2d | 2007-07-09 | 2007-07-10 |  |  |  |  | 85d |  |  | 52.8h |
| 115 | 1.2.2.6.1 | Test Environment Available |  | 1d | 2007-07-09 | 2007-07-09 |  |  |  |  | 86d |  |  |  |
| 116 | 1.2.2.6.2 | Installation Document |  | 1d | 2007-07-09 | 2007-07-09 |  |  |  |  | 86d |  |  |  |
| 117 | 1.2.2.6.3 | **Set Up Tools** |  | 2d | 2007-07-09 | 2007-07-10 |  |  |  |  | 85d |  |  | 52.8h |
| 118 | 1.2.2.6.3.1 | Set Up Continuous Integration |  | 2d | 2007-07-09 | 2007-07-10 |  |  |  |  | 85d |  | kkanchinadam; smatyas [10%] | 17.6h |
| 119 | 1.2.2.6.3.2 | Set Up Selenium |  | 2d | 2007-07-09 | 2007-07-10 |  |  |  |  | 85d |  | kkanchinadam; smatyas [10%] | 17.6h |
| 120 | 1.2.2.6.3.3 | Set Up Code Quality Tools |  | 2d | 2007-07-09 | 2007-07-10 |  |  |  |  | 85d |  | kkanchinadam; smatyas [10%] | 17.6h |
| 121 | 1.2.2.7 | **Configuration Management** |  | 1d? | 2007-07-09 | 2007-07-09 |  |  |  |  | 86d |  |  |  |
| 122 | 1.2.2.7.1 | Define Configuration Management Plan |  | 1d? | 2007-07-09 | 2007-07-09 |  |  |  |  | 86d |  |  |  |
| 123 | 1.2.2.8 | Elaboration Iteration 2 Complete | milestone | 0d | 2007-08-03 | 2007-08-03 | 110 |  |  |  | 67d |  |  |  |
| 124 | 1.3 | **Construction Phase** |  | 60d | 2007-07-18 | 2007-10-09 | 104 | 2007-05-17 | 2007-05-18 | 1d? | 0d |  |  |  |
| 125 | 1.3.1 | Construction - Iteration 1 |  | 4w | 2007-07-18 | 2007-08-14 |  | 2007-05-17 | 2007-05-18 | 1d? | 0d |  |  |  |
| 126 | 1.3.2 | Construction - Iteration 2 | milestone | 4w | 2007-08-15 | 2007-09-11 | 125 | 2007-05-17 | 2007-05-18 | 1d? | 0d |  |  |  |
| 127 | 1.3.3 | Construction - Iteration 3 |  | 4w | 2007-09-12 | 2007-10-09 | 126 |  |  |  | 0d |  |  |  |
| 128 | 1.3.4 | Release Candidate Delivered to QA |  | 1d | 2007-07-18 | 2007-07-18 |  |  |  |  | 59d |  |  |  |

| ID | WBS | Task | Type | Duration | Start | Finish | Predecessors | Baseline start | Baseline finish | Baseline duration | Total slack |
| --- | --- | --- | --- | --- | --- | --- | --- | --- | --- | --- | --- |
| 129 | 1.4 | **Transition Phase** |  | 20d | 2007-10-10 | 2007-11-06 | 124, 128 | 2007-05-18 | 2007-05-21 | 1d? | 0d |
| 130 | 1.4.1 | Transition - Iteration 1 | milestone | 4w | 2007-10-10 | 2007-11-06 |  | 2007-05-18 | 2007-05-21 | 1d? | 0d |
| 131 | 2 | **protExpress 1.x** |  | 1d? | 2007-04-02 | 2007-04-02 |  |  |  |  | 156d |
| 132 | 2.1 | Elaboration |  | 1d? | 2007-04-02 | 2007-04-02 |  |  |  |  | 156d |
| 133 | 2.2 | Construction |  | 1d? | 2007-04-02 | 2007-04-02 |  |  |  |  | 156d |
| 134 | 2.3 | Transition |  | 1d? | 2007-04-02 | 2007-04-02 |  |  |  |  | 156d |
